Schedule from OmniPlan, 2015-09-07 to 2015-09-22.
Project start 2015-09-07

## Resources

| Resource | Group |
| --- | --- |
| 资源 1 | staff |
| 设备 1 | equipment |
| 素材 1 | material |
| 群组 1 | group |
| 资源 1 | staff |

## Schedule

| ID | WBS | Task | Start | Predecessors | Complete | Constraint | Work | Actual work |
| --- | --- | --- | --- | --- | --- | --- | --- | --- |
| 1 | 1 | **tech gap** |  |  |  |  |  |  |
| 2 | 1.1 | springmvc | 2015-09-10 |  | 100% | start no earlier than 2015-09-07 | 32h | 32h |
| 3 | 1.2 | json＋springmvc | 2015-09-16 | 2 |  | start no earlier than 2015-09-11 | 8h |  |
| 4 | 1.3 | restful service | 2015-09-17 | 3 |  | start no earlier than 2015-09-14 | 24h |  |
| 5 | 1.4 | maven springmvc | 2015-09-07 |  | 100% | start no earlier than 2015-09-04 | 24h | 24h |
| 6 | 1.5 | sonatype nexus | 2015-09-11 |  | 100% | start no earlier than 2015-09-08 | 8h | 8h |
| 7 | 1.6 | spring mvc, mybatis, json，restful，maven，nexus demo | 2015-09-16 | 2 | 80% | start no earlier than 2015-09-15 | 32h | 25.6h |
| 8 | 1.7 | oa bootstrap | 2015-09-22 | 4 |  | start no earlier than 2015-09-17 | 24h |  |
| 9 | 1.8 | Grails |  |  |  | start no earlier than 2015-09-24 | 24h |  |
| 10 | 2 | **demo version** |  |  |  | start no earlier than 2015-09-17 |  |  |
| 11 | 2.1 | springmvc+mybatis demo CRUD |  |  |  | start no earlier than 2015-09-17 | 8h |  |
| 12 | 2.2 | bootstrap UI HTML |  |  |  | start no earlier than 2015-09-17 | 8h |  |
| 13 | 2.3 | 数据库ER图 |  |  |  | start no earlier than 2015-09-17 | 8h |  |
| 14 | 2.4 | 数据库字段设计 |  |  |  | start no earlier than 2015-09-17 | 8h |  |
